# Parctica 2- Gestion

Schedule from MS Project, 2021-06-01 to 2022-10-03, status date 2021-05-08, costs in €.

## Calendars

- Proyecto- Practica 2: Mon-Fri 09:00-13:00, 14:00-18:00; Sat-Sun off. Exceptions (off unless hours are given): 2021-08-01 to 2021-08-31 (Vacaciones verano - 2021), 2021-10-12 to 2022-10-12 (Festivo 12 Octubre, recurring), 2021-11-01 to 2022-11-01 (Festivo 1 Noviembre, recurring), 2021-12-06 to 2022-12-06 (Festivo 6 Diciembre, recurring), 2021-12-08 to 2022-12-08 (Festivo 8 Diciembre, recurring), 2021-12-24 to 2022-01-07 (Navidad - 2021), 2022-01-28 (Festivo 28 Enero, recurring), 2022-03-23 to 2022-03-30 (Semana Santa), 2022-05-01 (Festivo 1 Mayo), 2022-05-02 (Festivo 2 Mayo), 2022-08-01 to 2022-08-31 (Vaciones de Verano- 2022).

## Resources

| Resource | Group | Rate |
| --- | --- | --- |
| Jefe de proyecto | Cliente | 120 |
| Comercial | Cliente | 70 |
| Programador | Desarrollo | 80 |
| Analista | Desarrollo | 100 |
| Técnico de seguridad | Calidad | 100 |
| Responsable de calidad | Calidad | 110 |
| Técnico en redes | Sistemas | 80 |
| Administrador de sistemas | Sistemas | 90 |
| Administrador de BD | Sistemas | 80 |
| Sala multimedia |  | 50 |

## Schedule

| ID | WBS | Task | Type | Duration | Start | Finish | Predecessors | Total slack | Free slack | Constraint | Resources | Work | Cost |
| --- | --- | --- | --- | --- | --- | --- | --- | --- | --- | --- | --- | --- | --- |
| 1 | 1 | **Vibialidad** |  | 48.12d | 2021-06-01 10:00 | 2021-09-07 11:00 |  | 8.75d |  |  |  | 1152h | 117,480 |
| 2 | 1.1 | Alcance del sistema |  | 9d | 2021-06-01 10:00 | 2021-06-14 10:00 |  | 8.75d | 0d |  | Analista [200%]; Comercial; Jefe de proyecto; Responsable de calidad | 288h | 28,800 |
| 3 | 1.2 | Estudio de la situación actual |  | 12d | 2021-06-14 10:00 | 2021-06-30 10:00 | 2 | 17.88d | 9.12d |  | Analista [200%]; Jefe de proyecto | 192h | 21,120 |
| 4 | 1.3 | Definición de requisitos del sistema |  | 19.5d | 2021-06-14 10:00 | 2021-07-13 11:00 | 2 | 8.75d | 0d |  | Analista [200%]; Jefe de proyecto; Responsable de calidad | 216h | 23,760 |
| 5 | 1.4 | Estudio de alternativas |  | 15d | 2021-07-13 11:00 | 2021-09-02 11:00 | 3, 4 | 8.75d | 0d |  | Administrador de sistemas; Analista [200%]; Jefe de proyecto; Administrador de BD [50%]; Técnico de seguridad [50%]; Técnico en redes [50%] | 360h | 34,200 |
| 6 | 1.5 | Selección de la solución | milestone | 3d | 2021-09-02 11:00 | 2021-09-07 11:00 | 5 | 8.75d | 0d |  | Analista [200%]; Comercial; Jefe de proyecto; Responsable de calidad | 96h | 9,600 |
| 7 | 2 | **Análisis** |  | 63.75d | 2021-09-07 11:00 | 2021-12-09 18:00 |  | 0d |  |  |  | 2104h | 214,400 |
| 8 | 2.1 | Definición del sistema |  | 10d | 2021-09-07 11:00 | 2021-09-21 11:00 | 6 | 8.75d | 0d |  | Analista [200%]; Jefe de proyecto | 160h | 17,600 |
| 9 | 2.2 | Establecimiento de requisitos |  | 30d | 2021-09-15 11:00 | 2021-11-08 11:00 | 8SS+6d | 18.75d |  |  | Analista [200%]; Jefe de proyecto; Responsable de calidad | 576h | 63,360 |
| 10 | 2.3 | Identificación de subsistemas | milestone | 18.12d | 2021-09-21 11:00 | 2021-10-18 12:00 | 8 | 8.75d | 0d |  | Jefe de proyecto; Analista [200%] | 432h | 46,080 |
| 11 | 2.4 | **Análisis detallado** |  | 24d | 2021-09-29 11:00 | 2021-11-04 11:00 |  | 8.75d |  |  |  | 576h | 51,840 |
| 12 | 2.4.1 | Caso de uso |  | 24d | 2021-09-29 11:00 | 2021-11-04 11:00 | 10SS+6d | 8.75d |  |  | Analista; Programador | 192h | 17,280 |
| 13 | 2.4.2 | Clases |  | 15d | 2021-10-04 11:00 | 2021-10-26 11:00 | 10SS+9d | 14.75d |  |  | Analista; Programador | 240h | 21,600 |
| 14 | 2.4.3 | Definición de interfaces |  | 12d | 2021-10-07 11:00 | 2021-10-29 11:00 | 10SS+12d | 11.75d |  |  | Analista; Programador | 144h | 12,960 |
| 15 | 2.5 | Plan de pruebas |  | 12d | 2021-11-17 09:00 | 2021-12-02 18:00 | 10, 12, 13, 14 | 0d |  | start no earlier than 2021-11-17 09:00 | Administrador de BD [50%]; Analista; Jefe de proyecto; Responsable de calidad; Técnico de seguridad; Técnico en redes [50%] | 288h | 28,320 |
| 16 | 2.6 | Aprobación fase de análisis | milestone | 3d | 2021-12-03 09:00 | 2021-12-09 18:00 | 15, 9 | 0d |  |  | Comercial; Jefe de proyecto; Responsable de calidad | 72h | 7,200 |
| 17 | 3 | **Diseño** |  | 45.12d | 2021-12-10 09:00 | 2022-03-01 10:00 |  | 0d |  |  |  | 1920h | 176,040 |
| 18 | 3.1 | Diseño de la arquitectura de soporte |  | 6d | 2021-12-10 09:00 | 2021-12-17 18:00 | 16 | 12.12d | 0d |  | Administrador de sistemas; Analista [200%]; Programador; Técnico de seguridad | 192h | 17,760 |
| 19 | 3.2 | **Diseño detallado** |  | 24.12d | 2021-12-10 09:00 | 2022-01-31 10:00 |  | 0d |  |  |  | 792h | 69,600 |
| 20 | 3.2.1 | Especificación de casos de uso |  | 18d | 2021-12-15 09:00 | 2022-01-24 18:00 | 16 | 3.12d |  |  | Analista; Programador [200%] | 288h | 25,920 |
| 21 | 3.2.2 | Especificación de clases |  | 24.12d | 2021-12-10 09:00 | 2022-01-31 10:00 | 16 | 0d |  |  | Analista; Programador [200%] | 504h | 43,680 |
| 22 | 3.3 | Diseño de la BD | milestone | 18d | 2021-12-20 09:00 | 2022-01-27 18:00 | 18 | 12.12d | 0d |  | Administrador de BD [50%]; Analista; Programador [200%] | 216h | 18,720 |
| 23 | 3.4 | **Especificaciones de construcción** |  | 21.12d | 2022-01-31 09:00 | 2022-03-01 10:00 |  | 0.12d |  |  |  | 720h | 69,960 |
| 24 | 3.4.1 | Especificación del entorno |  | 12d | 2022-01-31 10:00 | 2022-02-16 10:00 | 20, 21, 18 | 0d |  |  | Administrador de sistemas [50%]; Analista; Programador [50%] | 144h | 12,960 |
| 25 | 3.4.2 | Migración y carga inicial |  | 9d | 2022-02-16 10:00 | 2022-03-01 10:00 | 22, 24 | 0d |  |  | Administrador de sistemas [50%]; Analista; Programador [50%] | 144h | 13,320 |
| 26 | 3.4.3 | Diseño del plan de pruebas |  | 12.12d | 2022-01-31 09:00 | 2022-02-16 10:00 | 22 | 24d |  |  | Analista [200%]; Responsable de calidad; Técnico de seguridad | 288h | 29,760 |
| 27 | 3.4.4 | Requisitos de implantación | milestone | 6d | 2022-02-16 10:00 | 2022-02-24 10:00 | 24 | 78d |  |  | Analista [200%]; Administrador de sistemas | 144h | 13,920 |

| ID | WBS | Task | Type | Duration | Start | Finish | Predecessors | Total slack | Free slack | Constraint | Resources | Work | Cost |
| --- | --- | --- | --- | --- | --- | --- | --- | --- | --- | --- | --- | --- | --- |
| 28 | 4 | **Construcción** |  | 87d | 2022-02-16 10:00 | 2022-06-28 10:00 |  | 3d |  |  |  | 2832h | 254,848 |
| 29 | 4.1 | Generación del código principal |  | 15d | 2022-02-16 10:00 | 2022-04-14 11:00 | 24 | 3d |  |  | Programador [400%] | 480h | 38,400 |
| 30 | 4.2 | Pruebas unitarias |  | 30d | 2022-03-14 10:00 | 2022-05-04 10:00 | 26SS+6d, 29SS+15d, 32SS+9d | 0d |  |  | Programador; Técnico de seguridad [50%] | 240h | 21,600 |
| 31 | 4.3 | Pruebas de integración |  | 24d | 2022-03-22 10:00 | 2022-05-04 10:00 | 26, 30FF | 0d |  |  | Administrador de BD [50%]; Programador; Técnico de seguridad [50%] | 288h | 24,960 |
| 32 | 4.4 | Generación del código auxiliar |  | 12d | 2022-03-01 10:00 | 2022-03-17 10:00 | 25 | 0d |  |  | Programador [200%] | 192h | 15,360 |
| 33 | 4.5 | Pruebas del sistema | milestone | 36d | 2022-05-04 10:00 | 2022-06-23 10:00 | 31, 32, 29 | 0d |  |  | Administrador de BD [50%]; Administrador de sistemas [50%]; Analista; Programador [200%]; Responsable de calidad; Técnico de seguridad; Técnico en redes [50%] | 1008h | 92,160 |
| 34 | 4.6 | **Formación de usuarios** |  | 20d | 2022-05-20 10:00 | 2022-06-17 10:00 |  | 16d |  |  |  | 528h | 52,768 |
| 35 | 4.6.1 | Manuales de usuario |  | 9.6d | 2022-05-20 10:00 | 2022-06-02 15:48 | 33SS+12d | 16d | 0d |  | Analista; Programador [200%]; Responsable de calidad [50%] | 192h | 18,048 |
| 36 | 4.6.2 | Cursos para usuarios | milestone | 14d | 2022-05-30 10:00 | 2022-06-17 10:00 | 35SS+6d | 16d |  |  | Analista [200%]; Responsable de calidad | 336h | 34,720 |
| 37 | 4.7 | Aprobación del sistema | milestone | 3d | 2022-06-23 10:00 | 2022-06-28 10:00 | 27, 33 | 0d |  |  | Comercial; Jefe de proyecto; Técnico de seguridad; Responsable de calidad | 96h | 9,600 |
| 38 | 5 | **Implantación** |  | 27d | 2022-06-28 10:00 | 2022-09-06 10:00 |  | 0d |  |  |  | 1188h | 109,560 |
| 39 | 5.1 | Instalación de código |  | 9d | 2022-06-28 10:00 | 2022-07-11 10:00 | 37 | 0d |  |  | Analista; Programador [200%]; Técnico en redes | 288h | 24,480 |
| 40 | 5.2 | Migración de datos |  | 6.12d | 2022-06-28 10:00 | 2022-07-06 11:00 | 37 | 2.88d |  |  | Analista; Programador [200%]; Administrador de BD | 192h | 16,320 |
| 41 | 5.3 | Pruebas de aceptación | milestone | 9d | 2022-07-11 10:00 | 2022-07-22 10:00 | 35, 36, 39, 40 | 0d |  |  | Analista [200%]; Programador [50%] | 180h | 17,280 |
| 42 | 5.4 | Preparación del mantenimiento |  | 12.12d | 2022-06-28 10:00 | 2022-07-14 11:00 | 37 | 5.88d |  |  | Comercial; Jefe de proyecto; Analista; Responsable de calidad [50%] | 168h | 16,560 |
| 43 | 5.5 | Paso a producción | milestone | 9d | 2022-07-22 10:00 | 2022-09-06 10:00 | 41, 42 | 0d |  |  | Comercial; Jefe de proyecto; Responsable de calidad; Analista [50%]; Programador [50%]; Técnico de seguridad [50%]; Administrador de sistemas [50%] | 360h | 34,920 |
| 44 | 6 | **Reuniones de seguimiento** |  | 281.12d | 2021-06-01 09:00 | 2022-10-03 10:00 |  | 0d |  |  |  | 68h | 7,650 |
| 45 | 6.1 | Reuniones de seguimiento 1 |  | 1h | 2021-06-01 09:00 | 2021-06-01 10:00 |  | 0d |  | start no earlier than 2021-06-01 09:00 | Jefe de proyecto; Comercial; Responsable de calidad; Analista; Sala multimedia | 4h | 450 |
| 46 | 6.2 | Reuniones de seguimiento 2 |  | 1h | 2021-07-01 09:00 | 2021-07-01 10:00 |  | 0d |  | start no earlier than 2021-07-01 09:00 | Jefe de proyecto; Comercial; Analista; Responsable de calidad; Sala multimedia | 4h | 450 |
| 47 | 6.3 | Reuniones de seguimiento 3 |  | 1h | 2021-09-01 09:00 | 2021-09-01 10:00 |  | 0d |  | start no earlier than 2021-08-01 09:00 | Jefe de proyecto; Comercial; Analista; Responsable de calidad; Sala multimedia | 4h | 450 |
| 48 | 6.4 | Reuniones de seguimiento 4 |  | 1h | 2021-09-01 09:00 | 2021-09-01 10:00 |  | 0d |  | start no earlier than 2021-09-01 09:00 | Jefe de proyecto; Comercial; Analista; Responsable de calidad; Sala multimedia | 4h | 450 |
| 49 | 6.5 | Reuniones de seguimiento 5 |  | 1h | 2021-10-01 09:00 | 2021-10-01 10:00 |  | 0d |  | start no earlier than 2021-10-01 09:00 | Jefe de proyecto; Comercial; Analista; Responsable de calidad; Sala multimedia | 4h | 450 |
| 50 | 6.6 | Reuniones de seguimiento 6 |  | 1h | 2021-11-02 09:00 | 2021-11-02 10:00 |  | 0d |  | start no earlier than 2021-11-01 09:00 | Jefe de proyecto; Comercial; Analista; Responsable de calidad; Sala multimedia | 4h | 450 |
| 51 | 6.7 | Reuniones de seguimiento 7 |  | 1h | 2021-12-01 09:00 | 2021-12-01 10:00 |  | 0d |  | start no earlier than 2021-12-01 09:00 | Jefe de proyecto; Comercial; Analista; Responsable de calidad; Sala multimedia | 4h | 450 |
| 52 | 6.8 | Reuniones de seguimiento 8 |  | 1h | 2022-01-10 09:00 | 2022-01-10 10:00 |  | 0d |  | start no earlier than 2022-01-01 09:00 | Jefe de proyecto; Comercial; Analista; Responsable de calidad; Sala multimedia | 4h | 450 |
| 53 | 6.9 | Reuniones de seguimiento 9 |  | 1h | 2022-02-01 09:00 | 2022-02-01 10:00 |  | 0d |  | start no earlier than 2022-02-01 09:00 | Jefe de proyecto; Comercial; Analista; Responsable de calidad; Sala multimedia | 4h | 450 |
| 54 | 6.10 | Reuniones de seguimiento 10 |  | 1h | 2022-03-01 09:00 | 2022-03-01 10:00 |  | 0d |  | start no earlier than 2022-03-01 09:00 | Jefe de proyecto; Comercial; Analista; Responsable de calidad; Sala multimedia | 4h | 450 |
| 55 | 6.11 | Reuniones de seguimiento 11 |  | 1h | 2022-04-01 09:00 | 2022-04-01 10:00 |  | 0d |  | start no earlier than 2022-04-01 09:00 | Jefe de proyecto; Comercial; Analista; Responsable de calidad; Sala multimedia | 4h | 450 |
| 56 | 6.12 | Reuniones de seguimiento 12 |  | 1h | 2022-05-03 09:00 | 2022-05-03 10:00 |  | 0d |  | start no earlier than 2022-05-01 09:00 | Jefe de proyecto; Comercial; Analista; Responsable de calidad; Sala multimedia | 4h | 450 |
| 57 | 6.13 | Reuniones de seguimiento 13 |  | 1h | 2022-06-01 09:00 | 2022-06-01 10:00 |  | 0d |  | start no earlier than 2022-06-01 09:00 | Jefe de proyecto; Comercial; Analista; Responsable de calidad; Sala multimedia | 4h | 450 |
| 58 | 6.14 | Reuniones de seguimiento 14 |  | 1h | 2022-07-01 09:00 | 2022-07-01 10:00 |  | 0d |  | start no earlier than 2022-07-01 09:00 | Jefe de proyecto; Comercial; Analista; Responsable de calidad; Sala multimedia | 4h | 450 |
| 59 | 6.15 | Reuniones de seguimiento 15 |  | 1h | 2022-09-01 09:00 | 2022-09-01 10:00 |  | 0d |  | start no earlier than 2022-08-01 09:00 | Jefe de proyecto; Comercial; Analista; Responsable de calidad; Sala multimedia | 4h | 450 |
| 60 | 6.16 | Reuniones de seguimiento 16 |  | 1h | 2022-09-01 09:00 | 2022-09-01 10:00 |  | 0d |  | start no earlier than 2022-09-01 09:00 | Jefe de proyecto; Comercial; Analista; Responsable de calidad; Sala multimedia | 4h | 450 |
| 61 | 6.17 | Reuniones de seguimiento 17 |  | 1h | 2022-10-03 09:00 | 2022-10-03 10:00 |  | 0d |  | start no earlier than 2022-10-01 09:00 | Jefe de proyecto; Comercial; Analista; Responsable de calidad; Sala multimedia | 4h | 450 |
