# Proyecto1_apartado1_3_Revisado

Schedule from MS Project, 2020-01-08 to 2021-04-26, status date 2021-02-01, costs in €, A marks actual dates.
UAH

## Calendars

- Calendario del proyecto: Mon-Fri 09:00-14:00, 15:00-18:00; Sat-Sun off. Exceptions (off unless hours are given): 2016-01-28 to 2025-01-28 (28 de enero, recurring), 2016-05-01 to 2025-05-01 (1 de mayo, recurring), 2016-05-02 to 2025-05-02 (2 de mayo, recurring), 2016-10-12 to 2025-10-12 (12 de octubre, recurring), 2016-11-01 to 2025-11-01 (1 de noviembre, recurring), 2016-12-06 to 2025-12-06 (6 de diciembre, recurring), 2016-12-08 to 2025-12-08 (8 de diciembre, recurring), 2020-03-23 to 2020-03-30 (Semana Santa), 2020-08-01 to 2020-08-31 (Agosto), 2020-12-24 to 2021-01-07 (Navidad), 2021-03-23 to 2021-03-30 (Semana Santa).

## Resources

| Resource | Rate |
| --- | --- |
| Administración de BD | 70 |
| Infraestructura | 90 |
| Planes y Proyectos | 120 |
| Diseño de Sistemas | 100 |
| Programación | 70 |
| Seguridad y Control | 100 |
| Gestión de clientes | 70 |

## Schedule

| ID | WBS | Task | Type | Duration | Start | Finish | Predecessors | Complete | Remaining | Baseline start | Baseline finish | Baseline duration | Total slack | Free slack | Resources | Work | Actual work | Cost | Baseline cost | Actual cost |
| --- | --- | --- | --- | --- | --- | --- | --- | --- | --- | --- | --- | --- | --- | --- | --- | --- | --- | --- | --- | --- |
| 1 | A | **Definición del sistema** |  | 50d | 2020-01-08 A | 2020-03-18 A |  | 100% |  | 2020-01-08 | 2020-03-18 | 50d |  |  |  | 1632h | 1632h | 153,600 | 153,600 | 153,600 |
| 2 | A.1 | Establecimiento de requisitos de usuario |  | 10d | 2020-01-08 A | 2020-01-21 A |  | 100% |  | 2020-01-08 | 2020-01-21 | 10d |  |  | Planes y Proyectos | 80h | 80h | 9,600 | 9,600 | 9,600 |
| 3 | A.2 | Estudio de requisitos software |  | 25d | 2020-02-06 A | 2020-03-11 A | 2 | 100% |  | 2020-02-06 | 2020-03-11 | 25d |  |  | Planes y Proyectos; Diseño de Sistemas [200%] | 360h | 360h | 38,400 | 38,400 | 38,400 |
| 4 | A.3 | Validación de requisitos software |  | 3d | 2020-03-12 A | 2020-03-16 A | 3, 5 | 100% |  | 2020-03-12 | 2020-03-16 | 3d |  |  | Diseño de Sistemas [200%]; Planes y Proyectos; Programación [400%]; Seguridad y Control | 192h | 192h | 16,800 | 16,800 | 16,800 |
| 5 | A.4 | Análisis de requisitos hardware/software |  | 30d | 2020-01-08 A | 2020-02-19 A |  | 100% |  | 2020-01-08 | 2020-02-19 | 30d |  |  | Planes y Proyectos; Diseño de Sistemas [200%]; Programación [200%]; Administración de BD | 960h | 960h | 84,800 | 84,800 | 84,800 |
| 6 | A.5 | Preparación de la instalación | milestone | 5d | 2020-03-12 A | 2020-03-18 A | 3, 5 | 100% |  | 2020-03-12 | 2020-03-18 | 5d |  |  | Seguridad y Control | 40h | 40h | 4,000 | 4,000 | 4,000 |
| 7 | B | **Análisis del sistema** |  | 75d | 2020-03-19 A | 2020-07-10 A |  | 100% |  | 2020-03-19 | 2020-07-03 | 70d |  |  |  | 2072h | 2072h | 188,000 | 188,000 | 188,000 |
| 8 | B.1 | Definición del entorno del sistema |  | 7d | 2020-03-19 A | 2020-04-06 A | 4, 6 | 100% |  | 2020-03-19 | 2020-04-06 | 7d |  |  | Diseño de Sistemas; Planes y Proyectos | 112h | 112h | 12,320 | 12,320 | 12,320 |
| 9 | B.2 | Análisis de casos de uso |  | 15d | 2020-04-07 A | 2020-04-27 A | 8 | 100% |  | 2020-04-07 | 2020-04-27 | 15d |  |  | Planes y Proyectos [50%]; Diseño de Sistemas [200%] | 300h | 300h | 31,200 | 31,200 | 31,200 |
| 10 | B.3 | Análisis de clases |  | 8d | 2020-06-10 A | 2020-06-19 A | 9FS+30d | 100% |  | 2020-04-28 | 2020-06-12 | 16d |  |  | Planes y Proyectos; Diseño de Sistemas; Seguridad y Control [50%] | 160h | 160h | 17,280 | 17,280 | 17,280 |
| 11 | B.4 | Definición de interfaces de usuario |  | 40d | 2020-04-07 A | 2020-06-02 A | 8 | 100% |  | 2020-04-07 | 2020-06-02 | 40d |  |  | Diseño de Sistemas [200%]; Programación [400%] | 1200h | 1200h | 96,000 | 96,000 | 96,000 |
| 12 | B.5 | Especificación del plan de pruebas | milestone | 15d | 2020-06-22 A | 2020-07-10 A | 10, 11 | 100% |  | 2020-06-15 | 2020-07-03 | 15d |  |  | Planes y Proyectos [50%]; Diseño de Sistemas [200%] | 300h | 300h | 31,200 | 31,200 | 31,200 |
| 13 | C | **Desarrollo del sistema** |  | 144d | 2020-07-13 A | 2021-03-18 |  | 84% | 22.38d | 2020-07-06 | 2021-03-11 | 144d | 21d |  |  | 5110h | 4184h | 394,440 | 392,240 | 320,720 |
| 14 | C.1 | Especificación detallada de construcción |  | 10d | 2020-07-13 A | 2020-07-24 A | 12 | 100% |  | 2020-07-06 | 2020-07-17 | 10d |  |  | Diseño de Sistemas [200%]; Programación [400%]; Administración de BD; Infraestructura | 640h | 640h | 51,200 | 51,200 | 51,200 |
| 15 | C.2 | Estudio y valoración de componentes |  | 32d | 2020-07-27 A | 2020-10-16 A | 14 | 100% |  | 2020-07-20 | 2020-10-08 | 32d |  |  | Diseño de Sistemas; Programación [200%]; Administración de BD [50%]; Infraestructura [50%] | 512h | 512h | 40,960 | 40,960 | 40,960 |
| 16 | C.3 | Estudio y valoración de procedimientos |  | 22d | 2020-07-27 A | 2020-09-23 | 14 | 80% | 4.29d | 2020-07-20 | 2020-09-16 | 22d | 133d |  | Diseño de Sistemas; Programación [200%]; Administración de BD; Infraestructura | 902h | 704h | 72,600 | 70,400 | 58,080 |
| 17 | C.4 | **Diseño y construcción** |  | 57d | 2020-10-19 A | 2021-01-21 A |  | 100% |  | 2020-10-09 | 2021-01-14 | 57d |  |  |  | 1992h | 1992h | 141,840 | 141,840 | 141,840 |
| 18 | C.4.1 | Diseño de clases |  | 20d | 2020-10-19 A | 2020-11-13 A | 15, 16 | 100% |  | 2020-10-09 | 2020-11-06 | 20d |  |  | Programación [200%] | 320h | 320h | 22,400 | 22,400 | 22,400 |
| 19 | C.4.2 | Diseño de casos de uso |  | 30d | 2020-10-19 A | 2020-11-27 A | 15, 16 | 100% |  | 2020-10-09 | 2020-11-20 | 30d |  |  | Programación [200%] | 480h | 480h | 33,600 | 33,600 | 33,600 |
| 20 | C.4.3 | Codificación |  | 20d | 2020-11-16 A | 2020-12-14 A | 18SS+10d, 19SS+15d | 100% |  | 2020-11-09 | 2020-12-04 | 20d |  |  | Programación [200%] | 320h | 320h | 22,400 | 22,400 | 22,400 |
| 21 | C.4.4 | Construcción de la base de datos |  | 17d | 2020-11-30 A | 2020-12-23 A | 18SS+10d, 19SS+15d | 100% |  | 2020-11-23 | 2020-12-16 | 17d |  |  | Programación [200%] | 272h | 272h | 19,040 | 19,040 | 19,040 |
| 22 | C.4.5 | Maquetación de contenidos |  | 20d | 2020-12-07 A | 2021-01-19 A | 20SS+10d, 21SS+5d | 100% |  | 2020-11-30 | 2021-01-12 | 20d |  |  | Programación [200%]; Infraestructura | 360h | 360h | 27,600 | 27,600 | 27,600 |
| 23 | C.4.6 | Pruebas unitarias |  | 20d | 2020-12-07 A | 2021-01-21 A | 20SS+10d, 21SS+5d | 100% |  | 2020-11-30 | 2021-01-14 | 20d |  |  | Programación [200%]; Administración de BD | 240h | 240h | 16,800 | 16,800 | 16,800 |
| 24 | C.5 | **Preparación de la transición** |  | 49d | 2021-01-08 A | 2021-03-18 |  | 33% | 33d | 2020-12-17 | 2021-03-11 | 49d | 11d |  |  | 1064h | 336h | 87,840 | 87,840 | 28,640 |
| 25 | C5.1 | Pruebas de integración | milestone | 32d | 2021-01-08 A | 2021-02-23 | 22FF, 23FF | 50% | 16d | 2020-12-17 | 2021-02-16 | 32d | 0d |  | Diseño de Sistemas; Programación [200%]; Administración de BD [50%]; Infraestructura [50%] | 640h | 336h | 51,200 | 51,200 | 28,640 |
| 26 | C5.2 | Manuales y ayuda online |  | 12d | 2021-02-24 | 2021-03-11 | 25 |  |  | 2021-02-17 | 2021-03-04 | 12d | 0d |  | Diseño de Sistemas; Programación [200%]; Seguridad y Control | 384h |  | 32,640 | 32,640 |  |
| 27 | C5.3 | Gestión de la configuración |  | 5d | 2021-03-12 | 2021-03-18 | 25 |  |  | 2021-03-05 | 2021-03-11 | 5d | 11d | 0d | Seguridad y Control | 40h |  | 4,000 | 4,000 |  |

| ID | WBS | Task | Type | Duration | Start | Finish | Predecessors | Baseline start | Baseline finish | Baseline duration | Total slack | Free slack | Resources | Work | Cost | Baseline cost |
| --- | --- | --- | --- | --- | --- | --- | --- | --- | --- | --- | --- | --- | --- | --- | --- | --- |
| 28 | D | **Puesta en explotación** |  | 38d | 2021-02-24 | 2021-04-26 |  | 2021-02-17 | 2021-04-19 | 38d | 0d |  |  | 1316h | 115,480 | 115,480 |
| 29 | D.1 | Formación de usuarios |  | 20d | 2021-03-12 | 2021-04-16 | 26 | 2021-03-05 | 2021-04-09 | 20d | 0d |  | Programación [200%]; Gestión de clientes | 480h | 33,600 | 33,600 |
| 30 | D.2 | Pruebas de sistema |  | 10d | 2021-02-24 | 2021-03-11 | 25 | 2021-02-17 | 2021-03-04 | 10d | 20d |  | Planes y Proyectos; Diseño de Sistemas; Gestión de clientes [50%] | 100h | 10,200 | 10,200 |
| 31 | D.3 | Pruebas de aceptación |  | 7d | 2021-02-24 | 2021-03-04 | 25 | 2021-02-17 | 2021-02-25 | 7d | 21d | 10d | Diseño de Sistemas; Planes y Proyectos | 112h | 12,320 | 12,320 |
| 32 | D.4 | Entrega |  | 10d | 2021-03-19 | 2021-04-09 | 31, 27 | 2021-03-12 | 2021-04-02 | 10d | 11d |  | Planes y Proyectos; Diseño de Sistemas [200%]; Programación; Administración de BD; Infraestructura | 480h | 44,000 | 44,000 |
| 33 | D.5 | Cierre del proyecto | milestone | 6d | 2021-04-19 | 2021-04-26 | 30, 31, 27, 29 | 2021-04-12 | 2021-04-19 | 6d | 0d |  | Planes y Proyectos; Diseño de Sistemas; Seguridad y Control | 144h | 15,360 | 15,360 |
